# 414_003_T02_PP_priloha_A_v1

Schedule from MS Project, 2021-03-01 to 2021-12-23, costs in Kč.

## Calendars

- Standardní: Mon-Fri 09:00-13:00, 14:00-18:00; Sat-Sun off.

## Resources

| Resource | Group | Rate |
| --- | --- | --- |
| bysnys analytik | zdroje | 500 |
| grafik | zdroje | 280 |
| databázový specialista | zdroje | 450 |
| IT technik | zdroje | 350 |
| hlavní tester | zdroje | 400 |
| tester | zdroje | 300 |
| vedoucí projektu | zdroje | 500 |
| programátor | zdroje | 360 |
| hlavní programátor | zdroje | 400 |
| systémový analytik | zdroje | 380 |
| procesní analytik | zdroje | 450 |

## Schedule

| ID | WBS | Task | Duration | Start | Finish | Predecessors | Baseline start | Baseline finish | Baseline duration | Baseline 1 start | Baseline 1 finish | Total slack | Free slack | Resources | Work | Cost | Baseline cost | Výstup (číslo) |
| --- | --- | --- | --- | --- | --- | --- | --- | --- | --- | --- | --- | --- | --- | --- | --- | --- | --- | --- |
| 1 | A | **Návrh a testování webové aplikace** | 59.51d | 2021-03-01 | 2021-05-21 |  | 2021-03-01 | 2021-05-19 | 58d | 2021-03-01 | 2021-05-19 | 0d |  | vedoucí projektu [50%] | 1196.76h | 456,219.2 | 397,360 |  |
| 2 | 1.1.1.1 | Příprava konceptuální úrovně modelu | 3d | 2021-03-01 | 2021-03-03 |  | 2021-03-01 | 2021-03-03 | 3d | 2021-03-01 | 2021-03-03 | 0d |  | databázový specialista | 24h | 10,800 | 10,800 |  |
| 3 | 1.1.1.2 | Příprava technologické úrovně modelu | 3d | 2021-03-04 | 2021-03-08 | 2 | 2021-03-04 | 2021-03-08 | 3d | 2021-03-04 | 2021-03-08 | 3.51d | 0d | databázový specialista | 24h | 10,800 | 10,800 |  |
| 4 | 1.1.1.3 | Příprava implementační úrovně modelu | 4d | 2021-03-09 | 2021-03-12 | 3 | 2021-03-09 | 2021-03-12 | 4d | 2021-03-09 | 2021-03-12 | 3.51d | 0d | hlavní programátor [50%] | 16h | 6,400 | 6,400 | V1.1.1 |
| 5 | 1.1.2.1 | Vytvoření návrhů jednotného vizuálního stylu aplikace | 5.17d | 2021-03-01 | 2021-03-08 | 2SS | 2021-03-01 | 2021-03-05 | 5d | 2021-03-01 | 2021-03-05 | 0d |  | grafik | 41.36h | 11,580.8 | 11,200 |  |
| 6 | 1.1.2.2 | Výběr stylu a návrh vizualizace všech stránek aplikace | 3d | 2021-03-08 | 2021-03-11 | 5 | 2021-03-08 | 2021-03-10 | 3d | 2021-03-08 | 2021-03-10 | 0d |  | grafik | 24h | 6,720 | 6,720 | V1.1.2 |
| 7 | 1.1.3.1 | Vytvoření logiky celé aplikace | 10d | 2021-03-15 | 2021-03-26 | 4 | 2021-03-15 | 2021-03-26 | 10d | 2021-03-15 | 2021-03-26 | 3.51d | 0d | hlavní programátor [50%]; programátor | 120h | 44,800 | 30,400 |  |
| 8 | 1.1.3.2 | Vytvoření databáze na základě datového modelu | 4.83d | 2021-03-29 | 2021-04-02 | 7 | 2021-03-29 | 2021-04-02 | 5d | 2021-03-29 | 2021-04-02 | 3.51d | 0d | databázový specialista | 38.64h | 17,388 | 18,000 |  |
| 9 | 1.1.3.3 | Napojení databáze na backend aplikace | 2d | 2021-04-02 | 2021-04-06 | 8 | 2021-04-05 | 2021-04-06 | 2d | 2021-04-05 | 2021-04-06 | 3.51d | 0d | databázový specialista; programátor | 32h | 12,960 | 12,960 |  |
| 10 | 1.1.3.4 | Vytvoření administrátorské sekce aplikace | 4d | 2021-04-06 | 2021-04-12 | 9 | 2021-04-07 | 2021-04-12 | 4d | 2021-04-07 | 2021-04-12 | 3.51d | 0d | hlavní programátor [50%]; programátor | 48h | 17,920 | 9,280 |  |
| 11 | 1.1.3.5 | Otestování programových kódů pomocí jednotkových testů | 3d | 2021-04-12 | 2021-04-15 | 10 | 2021-04-13 | 2021-04-15 | 3d | 2021-04-13 | 2021-04-15 | 3.51d |  | hlavní programátor [50%]; programátor | 36h | 13,440 | 7,680 | V1.1.3 |
| 12 | 1.1.4.1 | Vytvoření HTML + CSS základu aplikace | 8.17d | 2021-03-11 | 2021-03-23 | 6 | 2021-03-11 | 2021-03-22 | 8d | 2021-03-11 | 2021-03-22 | 0d |  | grafik | 65.36h | 18,300.8 | 17,920 |  |
| 13 | 1.1.4.2 | Zavedení požadovaných uživatelských funkcionalit | 7d | 2021-03-23 | 2021-04-01 | 12 | 2021-03-23 | 2021-03-31 | 7d | 2021-03-23 | 2021-03-31 | 0d |  | programátor | 56h | 20,160 | 20,160 |  |
| 14 | 1.1.4.3 | Otestování a schválení grafického rozhraní aplikace | 10d | 2021-04-01 | 2021-04-15 | 13 | 2021-04-01 | 2021-04-14 | 10d | 2021-04-01 | 2021-04-14 | 0d |  | hlavní tester [50%]; tester | 120h | 40,000 | 18,400 |  |
| 15 | 1.1.4.4 | Otestování a schválení zakomponovaných uživatelských funkcionalit | 4d | 2021-04-15 | 2021-04-21 | 14 | 2021-04-15 | 2021-04-20 | 4d | 2021-04-15 | 2021-04-20 | 0d |  | hlavní tester [50%]; tester | 48h | 16,000 | 16,000 | V1.1.4 |
| 16 | 1.1.5.1 | Programové propojení frontendu a backendu | 8.17d | 2021-04-21 | 2021-05-03 | 15, 11 | 2021-04-21 | 2021-04-30 | 8d | 2021-04-21 | 2021-04-30 | 0d |  | programátor | 65.36h | 23,529.6 | 23,040 |  |
| 17 | 1.1.5.2 | Vytvoření testovacího prostředí | 10d | 2021-05-03 | 2021-05-17 | 16 | 2021-05-03 | 2021-05-14 | 10d | 2021-05-03 | 2021-05-14 | 0d |  | hlavní tester [50%]; tester; databázový specialista [20%] | 136h | 47,200 | 47,200 |  |
| 18 | 1.1.5.3 | Otestování aplikace v roli běžného uživatele | 4d | 2021-05-17 | 2021-05-21 | 17 | 2021-05-17 | 2021-05-19 | 3d | 2021-05-17 | 2021-05-19 | 153.93d |  | tester | 32h | 9,600 | 7,200 |  |
| 19 | 1.1.5.4 | Otestování administrátorské sekce v roli správce | 4d | 2021-05-17 | 2021-05-21 | 17 | 2021-05-17 | 2021-05-19 | 3d | 2021-05-17 | 2021-05-19 | 0d |  | tester | 32h | 9,600 | 7,200 | V1.1.5;V1.1 |
| 20 | B | **Zprostředkování přístupů do portálů eIdentita a Datové schránky** | 21.51d | 2021-05-21 | 2021-06-22 |  | 2021-05-20 | 2021-06-17 | 21d | 2021-05-20 | 2021-06-17 | 0d |  | vedoucí projektu | 386.88h | 160,474.4 | 156,000 |  |
| 21 | 2.1.1.1 | Zjištění podmínek pro získání přístupů do portálu eIdentita | 4d | 2021-05-21 | 2021-05-27 | 19 | 2021-05-20 | 2021-05-25 | 4d | 2021-05-20 | 2021-05-25 | 1.17d | 0d | IT technik | 32h | 11,200 | 11,200 |  |
| 22 | 2.1.1.2 | Vypracování a zaslání žádosti Ministerstvu vnitra | 2d | 2021-06-08 | 2021-06-10 | 21FS+8d | 2021-06-07 | 2021-06-08 | 2d | 2021-06-07 | 2021-06-08 | 1.17d | 0d | IT technik | 16h | 5,600 | 5,600 | V2.1.1 |
| 23 | 2.1.2.1 | Nastavení komunikace mezi aplikací a portálem eIdentita | 2.17d | 2021-06-10 | 2021-06-14 | 22 | 2021-06-09 | 2021-06-10 | 2d | 2021-06-09 | 2021-06-10 | 1.17d | 0d | programátor | 17.36h | 6,249.6 | 5,760 |  |
| 24 | 2.1.2.2 | Nasazení skriptů pro autentizaci do backendu aplikace | 2.17d | 2021-06-14 | 2021-06-16 | 23 | 2021-06-11 | 2021-06-14 | 2d | 2021-06-11 | 2021-06-14 | 1.17d | 0d | programátor | 17.36h | 6,249.6 | 5,760 |  |
| 25 | 2.1.2.3 | Otestování přihlášení | 2d | 2021-06-16 | 2021-06-18 | 24 | 2021-06-15 | 2021-06-16 | 2d | 2021-06-15 | 2021-06-16 | 1.17d |  | tester | 16h | 4,800 | 4,800 | V2.1.2;V2.1 |
| 26 | 2.2.1.1 | Zjištění podmínek pro získání přístupů do portálu Datové schránky | 4d | 2021-05-21 | 2021-05-27 | 19 | 2021-05-20 | 2021-05-25 | 4d | 2021-05-20 | 2021-05-25 | 0d |  | IT technik | 32h | 11,200 | 11,200 |  |
| 27 | 2.2.1.2 | Vypracování a zaslání žádosti Ministerstvu vnitra | 2.17d | 2021-06-07 | 2021-06-09 | 26FS+7d | 2021-06-04 | 2021-06-07 | 2d | 2021-06-04 | 2021-06-07 | 0d |  | IT technik | 17.36h | 6,076 | 5,600 | V2.2.1 |
| 28 | 2.2.2.1 | Nastavení komunikace mezi aplikací a portálem eIdentita | 2.17d | 2021-06-09 | 2021-06-11 | 27 | 2021-06-08 | 2021-06-09 | 2d | 2021-06-08 | 2021-06-09 | 0d |  | programátor | 17.36h | 6,249.6 | 5,760 |  |
| 29 | 2.2.2.2 | Nastavení identifikace Datové schránky na základě autentizovaného uživatele | 2.17d | 2021-06-11 | 2021-06-16 | 28 | 2021-06-10 | 2021-06-11 | 2d | 2021-06-10 | 2021-06-11 | 0d |  | programátor | 17.36h | 6,249.6 | 5,760 |  |
| 30 | 2.2.2.3 | Nasazení skriptů pro odeslání notifikací do backendu aplikace | 2d | 2021-06-16 | 2021-06-18 | 29 | 2021-06-14 | 2021-06-15 | 2d | 2021-06-14 | 2021-06-15 | 0d |  | programátor | 16h | 5,760 | 5,760 |  |
| 31 | 2.2.2.4 | Otestování notifikačního odesílání | 2d | 2021-06-18 | 2021-06-22 | 30 | 2021-06-16 | 2021-06-17 | 2d | 2021-06-16 | 2021-06-17 | 0d |  | tester | 16h | 4,800 | 4,800 | V2.2.2;V2.2 |

| ID | WBS | Task | Duration | Start | Finish | Predecessors | Baseline start | Baseline finish | Baseline duration | Baseline 1 start | Baseline 1 finish | Total slack | Free slack | Resources | Work | Cost | Baseline cost | Výstup (číslo) |
| --- | --- | --- | --- | --- | --- | --- | --- | --- | --- | --- | --- | --- | --- | --- | --- | --- | --- | --- |
| 32 | C | **Získání informací o povinnostech občanů vůči finančnímu úřadu** | 83.51d | 2021-06-22 | 2021-10-15 |  | 2021-06-18 | 2021-10-07 | 80d | 2021-06-18 | 2021-10-07 | 0d |  | vedoucí projektu | 2240.92h | 1,009,976 | 993,840 |  |
| 33 | 3.1.2.1 | Vypracování a zaslání žádosti Ministerstvu financí o komunikační přístup do interních systémů finanční správy | 5.17d | 2021-06-22 | 2021-06-29 | 31, 25 | 2021-06-18 | 2021-06-24 | 5d | 2021-06-18 | 2021-06-24 | 0d |  | IT technik | 41.36h | 14,476 | 14,000 |  |
| 34 | 3.1.2.2 | Propojení s interním systémem finanční správy | 6.17d | 2021-07-06 | 2021-07-14 | 33FS+5d | 2021-07-02 | 2021-07-09 | 6d | 2021-07-02 | 2021-07-09 | 3.5d | 0d | hlavní programátor [50%]; programátor | 74.04h | 27,641.6 | 26,880 | V3.1.2 |
| 35 | 3.1.1.1 | Analýza interních systémů finanční správy pro automatizovaný sběr informací | 35d | 2021-07-14 | 2021-09-01 | 34 | 2021-07-12 | 2021-08-27 | 35d | 2021-07-12 | 2021-08-27 | 3.5d | 0d | systémový analytik; procesní analytik | 560h | 232,400 | 232,400 |  |
| 36 | 3.1.1.2 | Vypracování reportu informací, které lze získávat automatizovaně | 5.17d | 2021-09-01 | 2021-09-08 | 35 | 2021-08-30 | 2021-09-03 | 5d | 2021-08-30 | 2021-09-03 | 3.5d | 0d | procesní analytik; systémový analytik | 82.72h | 34,328.8 | 33,200 | V3.1.1 |
| 37 | 3.1.3.1 | Vytvoření skriptů pro získání informací | 9.5d | 2021-09-08 | 2021-09-22 | 36 | 2021-09-06 | 2021-09-17 | 10d | 2021-09-06 | 2021-09-17 | 3.5d | 0d | programátor | 76h | 27,360 | 28,800 |  |
| 38 | 3.1.3.2 | Otestování automatického sběru informací | 5d | 2021-09-22 | 2021-09-29 | 37 | 2021-09-20 | 2021-09-24 | 5d | 2021-09-20 | 2021-09-24 | 3.5d | 0d | tester | 40h | 12,000 | 12,000 | V3.1.3 |
| 39 | 3.1.4.1 | Vložení skriptů do backendu aplikace | 3.17d | 2021-09-29 | 2021-10-04 | 38 | 2021-09-27 | 2021-09-29 | 3d | 2021-09-27 | 2021-09-29 | 3.5d | 0d | programátor | 25.36h | 9,129.6 | 8,640 |  |
| 40 | 3.1.4.2 | Vytvoření skriptu pro pravidelné spouštění automatizovaného sběru informací | 5.83d | 2021-10-04 | 2021-10-12 | 39 | 2021-09-30 | 2021-10-07 | 6d | 2021-09-30 | 2021-10-07 | 3.5d |  | programátor | 46.64h | 16,790.4 | 17,280 | V3.1.4;V3.1 |
| 41 | 3.2.1.1 | Analýza interních systémů finanční správy pro manuální sběr informací | 20d | 2021-06-29 | 2021-07-27 | 33 | 2021-06-18 | 2021-07-15 | 20d | 2021-06-18 | 2021-07-15 | 0d |  | bysnys analytik | 160h | 80,000 | 80,000 |  |
| 42 | 3.2.1.2 | Vypracování reportu informací, které lze získat manuálně | 10d | 2021-07-27 | 2021-08-10 | 41 | 2021-07-16 | 2021-07-29 | 10d | 2021-07-16 | 2021-07-29 | 0d |  | bysnys analytik | 80h | 40,000 | 40,000 | V3.2.1 |
| 43 | 3.2.2.1 | Kontaktování finanční správy ohledně výběru pracovníků | 20d | 2021-08-10 | 2021-09-07 | 42 | 2021-07-30 | 2021-08-26 | 20d | 2021-07-30 | 2021-08-26 | 0d |  | bysnys analytik | 160h | 80,000 | 80,000 |  |
| 44 | 3.2.2.2 | Vypracování seznamu pracovníků pro zadávání informací do systému | 5.17d | 2021-09-07 | 2021-09-14 | 43 | 2021-08-27 | 2021-09-02 | 5d | 2021-08-27 | 2021-09-02 | 0d |  | bysnys analytik | 41.36h | 20,680 | 20,000 | V3.2.2 |
| 45 | 3.2.3.1 | Vytvoření administrátorských účtů | 2d | 2021-09-14 | 2021-09-16 | 44 | 2021-09-03 | 2021-09-06 | 2d | 2021-09-03 | 2021-09-06 | 0d |  | programátor | 16h | 5,760 | 5,760 |  |
| 46 | 3.2.3.2 | Přidělení práv administrativních pracovníků | 1.17d | 2021-09-16 | 2021-09-17 | 45 | 2021-09-07 | 2021-09-07 | 1d | 2021-09-07 | 2021-09-07 | 0d |  | programátor | 9.36h | 3,369.6 | 2,880 | V3.2.3 |
| 47 | 3.2.4.1 | Zjištění kroků pro manuální zaznamenávání informací o povinnostech | 10d | 2021-09-17 | 2021-10-01 | 46 | 2021-09-08 | 2021-09-21 | 10d | 2021-09-08 | 2021-09-21 | 0d |  | procesní analytik | 80h | 36,000 | 36,000 |  |
| 48 | 3.2.4.2 | Sepsání návodu k zadávání informací pro administrativní pracovníky | 10d | 2021-10-01 | 2021-10-15 | 47 | 2021-09-22 | 2021-10-05 | 10d | 2021-09-22 | 2021-10-05 | 0d |  | procesní analytik | 80h | 36,000 | 36,000 | V3.2.4;V3.2 |
| 49 | D | **Nasazení aplikace do produkčního prostředí** | 29.51d | 2021-10-15 | 2021-11-26 |  | 2021-10-08 | 2021-11-17 | 29d | 2021-10-08 | 2021-11-17 | 0d |  | vedoucí projektu | 472.16h | 200,668 | 197,200 |  |
| 50 | 1.2.1.1 | Výběr domény | 3.17d | 2021-10-15 | 2021-10-20 | 40, 48 | 2021-10-08 | 2021-10-12 | 3d | 2021-10-08 | 2021-10-12 | 0d |  | IT technik | 25.36h | 8,876 | 8,400 |  |
| 51 | 1.2.1.2 | Registrace a zakoupení domény | 1.17d | 2021-10-20 | 2021-10-21 | 50 | 2021-10-13 | 2021-10-13 | 1d | 2021-10-13 | 2021-10-13 | 0d |  | IT technik | 9.36h | 3,276 | 2,800 | V1.2.1 |
| 52 | 1.2.2.1 | Výběr typu hostingu aplikace | 2d | 2021-10-21 | 2021-10-25 | 51 | 2021-10-14 | 2021-10-15 | 2d | 2021-10-14 | 2021-10-15 | 0d |  | IT technik | 16h | 5,600 | 5,600 |  |
| 53 | 1.2.2.2 | Příprava prostředí pro všechny potřebné komponenty aplikace | 14.83d | 2021-10-25 | 2021-11-15 | 52 | 2021-10-18 | 2021-11-05 | 15d | 2021-10-18 | 2021-11-05 | 0d |  | IT technik | 118.64h | 41,524 | 42,000 | V1.2.2 |
| 54 | 1.2.3.1 | Přesunutí aplikace z testovacího na produkční prostředí | 5.17d | 2021-11-15 | 2021-11-22 | 53 | 2021-11-08 | 2021-11-12 | 5d | 2021-11-08 | 2021-11-12 | 0d |  | IT technik | 41.36h | 14,476 | 14,000 |  |
| 55 | 1.2.3.2 | Otestování aplikace v produkčním prostředí čili kontrola, zda migrace proběhla v pořádku | 3.17d | 2021-11-22 | 2021-11-26 | 54 | 2021-11-15 | 2021-11-17 | 3d | 2021-11-15 | 2021-11-17 | 0d |  | IT technik | 25.36h | 8,876 | 8,400 | V1.2.3;V1.2 |
| 56 | 5 | Projektový nárazník | 19.4d | 2021-11-26 | 2021-12-23 | 55 | 2021-03-01 | 2021-03-01 | 1d | 2021-03-01 | 2021-03-01 | 0d |  |  | 390.54h | 166,090.47 |  |  |
